# EPMS三期开发计划

How a schedule from MS Project changed from version to version. A marks actual dates.

## Version 1 (saved 2020-01-09, file 得益乳业-投递app项目开发进度V1.0.mpp)

Note of the change: init

| ID | WBS | Task | Duration | Start | Finish | Predecessors | Complete | Total float | Constraint |
| --- | --- | --- | --- | --- | --- | --- | --- | --- | --- |
| 1 | 1 | **得益乳业-投递app项目** | 138.94d | 2020-01-02 A | 2020-06-30 |  | 3% | 0d |  |
| 2 | 1.1 | **项目前期准备工作** | 7.94d | 2020-01-02 A | 2020-01-10 |  | 86% |  |  |
| 3 |  | 项目进场 | 0.5d | 2020-01-02 A | 2020-01-02 A |  | 100% |  |  |
| 4 |  | 启动会ppt编写 | 0.5d | 2020-01-02 A | 2020-01-02 A |  | 100% |  |  |
| 5 |  | 项目章程编写 | 1d | 2020-01-03 A | 2020-01-03 A | 4 | 100% |  |  |
| 6 |  | 项目主计划编写 | 1d | 2020-01-04 A | 2020-01-04 A |  | 100% |  | start no earlier than 2020-01-03 |
| 7 |  | 项目启动会召开 | 0.5d | 2020-01-09 | 2020-01-09 |  |  | 132.44d | start no earlier than 2020-01-09 |
| 8 | 1.2 | **需求分析** | 29.94d | 2020-01-06 A | 2020-02-20 |  | 15% |  |  |
| 9 | 1.2.1 | **需求整理业务调研** | 12.94d | 2020-01-06 A | 2020-01-20 |  | 42% |  |  |
| 10 |  | 周期订小程序需求整理 | 1.5d | 2020-01-06 A | 2020-01-07 |  | 90% | 1.3d | start no earlier than 2020-01-06 |
| 11 |  | 投递app需求整理 | 1.5d | 2020-01-08 A | 2020-01-09 | 10 | 50% | 131.44d |  |
| 12 |  | 后台辅助功能需求整理 | 1d | 2020-01-09 | 2020-01-10 | 11 |  | 131.44d | start no earlier than 2020-01-09 |
| 13 |  | 业务部门调研-益家订新零售 | 1d | 2020-01-10 | 2020-01-10 |  |  | 130.94d | start no earlier than 2020-01-10 |
| 14 | 1.2.2 | **第三方系统调研** | 3.5d | 2020-01-11 | 2020-01-15 |  |  | 127.44d |  |
| 15 |  | 主数据调研 | 0.5d | 2020-01-11 | 2020-01-11 |  |  | 130.44d | start no earlier than 2020-01-11 |
| 16 |  | BPM调研 | 0.5d | 2020-01-11 | 2020-01-11 |  |  | 130.44d | start no earlier than 2020-01-11 |
| 17 |  | 迁徙调研 | 0.5d | 2020-01-15 | 2020-01-15 |  |  | 127.44d | start no earlier than 2020-01-15 |
| 18 |  | 博智营销中台调研 | 0.5d | 2020-01-15 | 2020-01-15 |  |  | 127.44d | start no earlier than 2020-01-15 |
| 19 | 1.2.3 | **蓝图编写** | 12.94d | 2020-01-06 A | 2020-01-20 |  | 25% |  |  |
| 20 |  | 小程序原型绘制 | 2d | 2020-01-06 A | 2020-01-07 |  | 90% | 1.5d |  |
| 21 |  | 投递app原型绘制 | 3d | 2020-01-08 A | 2020-01-10 | 20 | 50% | 122.94d |  |
| 22 |  | 后台管理原型绘制 | 3d | 2020-01-11 | 2020-01-14 | 21 |  | 122.94d |  |
| 23 |  | 会议讨论、原型修订 | 5d | 2020-01-15 | 2020-01-20 | 22 |  | 122.94d |  |
| 24 | 1.2.4 | **需求评审** | 13.06d | 2020-02-03 | 2020-02-17 |  |  |  |  |
| 25 |  | 蓝图文档编写 | 7d | 2020-02-03 | 2020-02-10 |  |  | 105.94d |  |
| 26 |  | 蓝图确认签字 | 9d | 2020-02-11 | 2020-02-20 | 25 |  | 105.94d |  |
| 27 | 1.3 | **系统设计** | 23.94d | 2020-02-03 | 2020-02-29 |  |  |  |  |
| 28 |  | 概要设计 | 6d | 2020-02-03 | 2020-02-08 |  |  | 115.94d | start no earlier than 2020-02-03 |
| 29 |  | 数据库设计 | 8d | 2020-02-11 | 2020-02-19 |  |  | 106.94d | start no earlier than 2020-02-11 |
| 30 |  | 接口设计 | 6d | 2020-02-19 | 2020-02-25 |  |  | 101.94d | start no earlier than 2020-02-19 |
| 31 |  | 系统设计评审 | 5d | 2020-02-25 | 2020-02-29 |  |  | 97.94d | start no earlier than 2020-02-25 |
| 32 | 1.4 | **系统开发与测试** | 75d | 2020-02-01 | 2020-04-30 |  |  |  |  |
| 33 |  | 小程序开发 | 20d | 2020-02-01 | 2020-02-24 |  |  | 102.94d |  |
| 34 |  | 投递app开发 | 32d | 2020-02-24 | 2020-03-31 |  |  | 71.94d | start no earlier than 2020-02-24 |
| 35 |  | 后台管理开发 | 50d | 2020-02-01 | 2020-03-30 |  |  | 72.94d |  |
| 36 |  | 模块单元测试 | 24d | 2020-04-01 | 2020-04-30 |  |  | 47.94d | start no earlier than 2020-04-01 |
| 37 | 1.5 | **系统集成测试** | 22d | 2020-05-06 | 2020-05-30 |  |  |  |  |
| 38 |  | 测试环境准备 | 2d | 2020-05-06 | 2020-05-07 |  |  | 29.94d |  |
| 39 |  | 接口测试 | 5d | 2020-05-07 | 2020-05-12 |  |  | 41.94d | start no earlier than 2020-05-07 |
| 40 |  | UAT测试 | 10d | 2020-05-13 | 2020-05-23 | 38 |  | 25.94d | start no earlier than 2020-05-13 |
| 41 |  | 压力测试 | 5d | 2020-05-25 | 2020-05-29 | 40 |  | 25.94d |  |
| 42 |  | 编写测试报告 | 1d | 2020-05-30 | 2020-05-30 | 41 |  | 25.94d |  |
| 43 | 1.6 | **系统上线** | 6.94d | 2020-05-23 | 2020-05-30 |  |  |  |  |
| 44 |  | 上线环境准备 | 3d | 2020-05-23 | 2020-05-26 |  |  | 29.94d | start no earlier than 2020-05-23 |
| 45 |  | 系统培训 | 3d | 2020-05-23 | 2020-05-26 |  |  | 26.94d |  |
| 46 |  | 系统上线 | 3d | 2020-05-27 | 2020-05-29 | 45 |  | 26.94d |  |
| 47 | 1.7 | **系统试运行** | 26d | 2020-06-01 | 2020-06-30 |  |  |  |  |
| 48 |  | 试运行跟踪 | 26d | 2020-05-30 | 2020-06-30 |  |  | 0.06d | finish no earlier than 2020-06-30 |

## Version 2 (saved 2020-01-14, file 得益乳业-投递app项目开发进度V1.1.mpp)

Note of the change: init

Last finish stays 2020-06-30. Complete tasks 4 → 8.

Changed:

| ID | Task | Start | Finish | Duration | Complete | Total float |
| --- | --- | --- | --- | --- | --- | --- |
| 1 | **得益乳业-投递app项目** |  |  |  | 3% → 6% |  |
| 2 | **项目前期准备工作** |  |  |  | 86% → 100% |  |
| 7 | 项目启动会召开 | 2020-01-09 A | 2020-01-09 A |  | 0% → 100% | 132.44d → none |
| 8 | **需求分析** |  |  |  | 15% → 32% |  |
| 9 | **需求整理业务调研** |  |  |  | 42% → 84% |  |
| 11 | 投递app需求整理 |  |  |  | 50% → 90% | 131.44d → 0.5d |
| 12 | 后台辅助功能需求整理 | 2020-01-09 A |  |  | 0% → 50% |  |
| 13 | 业务部门调研-益家订新零售 | 2020-01-10 A | 2020-01-10 A |  | 0% → 100% | 130.94d → none |
| 14 | **第三方系统调研** | 2020-01-11 A |  |  | 0% → 73% |  |
| 15 | 主数据调研 | 2020-01-11 A | 2020-01-11 A |  | 0% → 100% | 130.44d → none |
| 16 | BPM调研 | 2020-01-11 A |  |  | 0% → 90% |  |
| 17 | 迁徙调研 | 2020-01-15 A | 2020-01-15 A |  | 0% → 100% | 127.44d → none |
| 19 | **蓝图编写** |  |  |  | 25% → 46% |  |
| 21 | 投递app原型绘制 |  |  |  | 50% → 90% | 122.94d → 1.5d |
| 22 | 后台管理原型绘制 | 2020-01-11 A |  |  | 0% → 50% |  |
| 32 | **系统开发与测试** |  | 2020-04-30 → 2020-05-15 (+15d) | 75d → 83.94d |  |  |
